# SDK 4.0

Schedule from MS Project, 2007-01-19 to 2007-10-16, A marks actual dates.
NCI

## Calendars

- Standard: Mon-Fri 08:00-12:00, 13:00-17:00; Sat-Sun off. Exceptions (off unless hours are given): 2007-02-05 to 2007-02-07, 2007-07-04.

## Resources

| Resource |
| --- |
| Satish |
| Dan |
| Charles |
| Avinash |
| Steve |
| Kunal |
| Doug |
| Satish/Kunal |
| Dan/Kunal |
| Ye |
| C |
| caGrid |
| Kunal/Satish |
| Satish/Dan |
| Christophe |
| Steve A. |
| Ye Wu |
| Vijay |
| Doug M. |
| 177 |
| SDK Users |
| Terpsys |
| QA |

## Schedule

| ID | WBS | Task | Type | Duration | Start | Finish | Predecessors | Complete | Remaining | Total slack | Constraint | Resources | Work | Actual work |
| --- | --- | --- | --- | --- | --- | --- | --- | --- | --- | --- | --- | --- | --- | --- |
| 1 | 1 | **caCORE SDK v4.0** |  | 160.5d? | 2007-01-19 A | 2007-09-06 |  | 41% | 95.31d? | 28.5d |  |  | 3350h | 1444.4h |
| 2 | 1.1 | **Inception** |  | 3d | 2007-01-19 A | 2007-01-23 A |  | 100% |  |  |  |  | 8h | 8h |
| 3 | 1.1.1 | 4.0 Kickoff meeting | milestone | 0d | 2007-01-19 A | 2007-01-19 A |  | 100% |  |  | start no earlier than 2007-01-19 | Satish; Charles; Dan; Steve |  |  |
| 4 | 1.1.2 | Create initial task plan |  | 1d | 2007-01-23 A | 2007-01-23 A |  | 100% |  |  |  | Satish | 8h | 8h |
| 5 | 1.2 | **Elaboration** |  | 13d | 2007-01-23 A | 2007-02-13 A |  | 100% |  |  |  |  | 246h | 246h |
| 6 | 1.2.1 | **Requiements meetings** |  | 6.25d | 2007-01-23 A | 2007-01-31 A |  | 100% |  |  |  |  | 78h | 78h |
| 7 | 1.2.1.1 | Requirements meeting (CGEMS, Rambrandt) |  | 0.25d | 2007-01-29 A | 2007-01-29 A |  | 100% |  |  | start no earlier than 2007-01-29 | Satish; Dan; Steve | 6h | 6h |
| 8 | 1.2.1.2 | Requirements Meeting (caCORE API) |  | 0.25d | 2007-01-23 A | 2007-01-23 A |  | 100% |  |  |  | Satish; Dan; Steve | 6h | 6h |
| 9 | 1.2.1.3 | Requirements meeting (caAdapter) |  | 0.25d | 2007-01-30 A | 2007-01-30 A |  | 100% |  |  | start no earlier than 2007-01-30 | Satish; Dan; Steve | 6h | 6h |
| 10 | 1.2.1.4 | Requirements meeting (caDSR) |  | 0.25d | 2007-01-30 A | 2007-01-30 A |  | 100% |  |  | start no earlier than 2007-01-30 | Satish; Dan; Steve | 6h | 6h |
| 11 | 1.2.1.5 | Requirements meeting (caGRID) |  | 0.25d | 2007-01-31 A | 2007-01-31 A |  | 100% |  |  | start no earlier than 2007-01-31 | Satish; Dan; Steve | 6h | 6h |
| 12 | 1.2.1.6 | Requirements meeting (other teams) |  | 2d | 2007-01-29 A | 2007-01-30 A |  | 100% |  |  | start no earlier than 2007-01-29 | Satish; Dan; Steve | 48h | 48h |
| 13 | 1.2.2 | **Scope Document** |  | 10d | 2007-01-26 A | 2007-02-13 A |  | 100% |  |  |  |  | 88h | 88h |
| 14 | 1.2.2.1 | Prepare list of scope items on gforge |  | 1d | 2007-01-26 A | 2007-01-26 A |  | 100% |  |  | start no earlier than 2007-01-26 | Satish | 8h | 8h |
| 15 | 1.2.2.2 | Draft scope document |  | 3d | 2007-01-29 A | 2007-01-31 A | 14 | 100% |  |  |  | Charles | 24h | 24h |
| 16 | 1.2.2.3 | Estimate LOE for Iteration 1 - 3 scope items |  | 1d | 2007-02-01 A | 2007-02-01 A | 15 | 100% |  |  |  | Satish | 8h | 8h |
| 17 | 1.2.2.4 | Prepare risk list |  | 1d | 2007-02-02 A | 2007-02-02 A | 16 | 100% |  |  |  | Charles; Satish | 16h | 16h |
| 18 | 1.2.2.5 | NCICB Review of scope document |  | 3d | 2007-02-08 A | 2007-02-12 A | 17 | 100% |  |  |  | Avinash | 24h | 24h |
| 19 | 1.2.2.6 | Revise scope document |  | 1d | 2007-02-13 A | 2007-02-13 A | 18 | 100% |  |  |  | Charles | 8h | 8h |
| 20 | 1.2.3 | **QA Actvities** |  | 7d | 2007-01-23 A | 2007-01-31 A |  | 100% |  |  |  |  | 72h | 72h |
| 21 | 1.2.3.1 | Setup QA repository | milestone | 0d | 2007-01-23 A | 2007-01-23 A |  | 100% |  |  |  | Steve |  |  |
| 22 | 1.2.3.2 | Modify Unit test cases and data |  | 5d | 2007-01-23 A | 2007-01-29 A | 21 | 100% |  |  |  | Steve | 40h | 40h |
| 23 | 1.2.3.3 | Validate test case |  | 2d | 2007-01-30 A | 2007-01-31 A | 22 | 100% |  |  |  | Steve; Satish | 32h | 32h |
| 24 | 1.2.4 | Revise task plan |  | 0.5d | 2007-01-23 A | 2007-01-23 A |  | 100% |  |  |  | Charles; Satish | 8h | 8h |

| ID | WBS | Task | Duration | Start | Finish | Predecessors | Complete | Remaining | Total slack | Constraint | Resources | Work | Actual work |
| --- | --- | --- | --- | --- | --- | --- | --- | --- | --- | --- | --- | --- | --- |
| 25 | 1.3 | **Construction** | 145.5d? | 2007-01-23 A | 2007-08-20 |  | 42% | 84.63d? | 41.5d |  |  | 2852h | 1190.4h |
| 26 | 1.3.1 | **Iteration 1** | 44d | 2007-01-23 A | 2007-03-28 |  | 98% | 0.97d | 143d |  |  | 802h | 753.2h |
| 27 | 1.3.1.1 | **SDK 3.2.1 Release** | 14d | 2007-01-23 A | 2007-02-14 A |  | 100% |  |  |  |  | 112h | 112h |
| 28 | 1.3.1.1.1 | Integrate new UI | 14d | 2007-01-23 A | 2007-02-14 A |  | 100% |  |  |  | Dan | 112h | 112h |
| 29 | 1.3.1.2 | **QA** | 3d | 2007-02-15 A | 2007-02-19 A |  | 100% |  |  |  |  | 24h | 24h |
| 30 | 1.3.1.2.1 | Test new UI | 3d | 2007-02-15 A | 2007-02-19 A | 28 | 100% |  |  |  | Steve | 24h | 24h |
| 31 | 1.3.1.3 | **caGrid Integration** | 33d | 2007-02-12 A | 2007-03-28 |  | 97% | 0.89d | 143d |  |  | 666h | 617.2h |
| 32 | 1.3.1.3.1 | **Support multiple concurrent users on the same ApplicationService** | 13.5d | 2007-02-12 A | 2007-03-01 A |  | 100% |  |  |  |  | 112h | 112h |
| 33 | 1.3.1.3.1.1 | Design | 3d | 2007-02-12 A | 2007-02-14 A |  | 100% |  |  |  | Satish/Kunal | 24h | 24h |
| 34 | 1.3.1.3.1.2 | Prototype | 3d | 2007-02-15 A | 2007-02-19 A | 33 | 100% |  |  |  | Satish | 24h | 24h |
| 35 | 1.3.1.3.1.3 | Design Review | 0.5d | 2007-02-20 A | 2007-02-20 A | 34 | 100% |  |  |  | Satish; Kunal; Doug; Avinash | 16h | 16h |
| 36 | 1.3.1.3.1.4 | Design Update/Prototype | 3d | 2007-02-20 A | 2007-02-23 A | 35 | 100% |  |  |  | Satish | 24h | 24h |
| 37 | 1.3.1.3.1.5 | Development | 3d | 2007-02-26 A | 2007-03-01 A | 38 | 100% |  |  |  | Satish | 24h | 24h |
| 38 | 1.3.1.3.2 | Use documentation in the Java docs (GF#1243) & Integrate JavaDocs in the web system | 2d | 2007-02-23 A | 2007-02-27 A | 36 | 100% |  |  |  | Satish | 16h | 16h |
| 39 | 1.3.1.3.3 | **Security** | 10.5d | 2007-02-27 A | 2007-03-13 A |  | 100% |  |  |  |  | 128h | 128h |
| 40 | 1.3.1.3.3.1 | Implement Security in Thick Client | 4d | 2007-02-27 A | 2007-03-05 A | 38 | 100% |  |  |  | Satish | 32h | 32h |
| 41 | 1.3.1.3.3.2 | **Integration of new Installation Process into SDK** | 3d | 2007-03-02 A | 2007-03-06 A |  | 100% |  |  |  |  | 24h | 24h |
| 42 | 1.3.1.3.3.2.1 | Code | 3d | 2007-03-02 A | 2007-03-06 A |  | 100% |  |  | start no earlier than 2007-03-02 | Kunal | 24h | 24h |
| 43 | 1.3.1.3.3.3 | **Upgrade to CSM to Support Grid ability to leverage new CSM installation steps** | 3d | 2007-03-07 A | 2007-03-09 A |  | 100% |  |  |  |  | 24h | 24h |
| 44 | 1.3.1.3.3.3.1 | Code | 3d | 2007-03-07 A | 2007-03-09 A | 41 | 100% |  |  |  | Kunal | 24h | 24h |
| 45 | 1.3.1.3.3.4 | **Configurable Authentication and Authorization for SDK Generated System** | 4d | 2007-03-08 A | 2007-03-13 A |  | 100% |  |  |  |  | 32h | 32h |
| 46 | 1.3.1.3.3.4.1 | Code | 4d | 2007-03-08 A | 2007-03-13 A |  | 100% |  |  | start no earlier than 2007-03-08 | Satish | 32h | 32h |
| 47 | 1.3.1.3.3.5 | **Documentation** | 2d | 2007-03-12 A | 2007-03-13 A |  | 100% |  |  |  |  | 16h | 16h |
| 48 | 1.3.1.3.3.5.1 | SDK Programmer's/Technical Guide | 2d | 2007-03-12 A | 2007-03-13 A | 43 | 100% |  |  |  | Kunal/Satish | 16h | 16h |
| 49 | 1.3.1.3.4 | Castor related work was performed on SDK 3.1 branch move to SDK 3.2 | 3d | 2007-02-15 A | 2007-02-19 A | 28 | 100% |  |  |  | Dan | 24h | 24h |
| 50 | 1.3.1.3.5 | Castor mapping for inheritance defect (GF#4031) | 0.25d | 2007-02-20 A | 2007-02-20 A | 49 | 100% |  |  |  | Dan | 2h | 2h |

| ID | WBS | Task | Type | Duration | Start | Finish | Predecessors | Complete | Remaining | Total slack | Free slack | Constraint | Resources | Work | Actual work |
| --- | --- | --- | --- | --- | --- | --- | --- | --- | --- | --- | --- | --- | --- | --- | --- |
| 51 | 1.3.1.3.6 | **Performance due to unnecessary nested sub-selects** |  | 6d | 2007-02-20 A | 2007-02-28 A | 50 | 100% |  |  |  |  |  | 48h | 48h |
| 52 | 1.3.1.3.6.1 | Analysis/Development |  | 6d | 2007-02-20 A | 2007-02-28 A |  | 100% |  |  |  |  | Dan | 48h | 48h |
| 53 | 1.3.1.3.7 | Provide the ability to only generate an XSD and castor mapping based on xmi input |  | 2d | 2007-02-28 A | 2007-03-02 A | 51 | 100% |  |  |  |  | Dan | 16h | 16h |
| 54 | 1.3.1.3.8 | Ability to generate interfaces/POJO for domain classes in our UML model |  | 3d | 2007-03-02 A | 2007-03-07 A | 53 | 100% |  |  |  |  | Dan | 24h | 24h |
| 55 | 1.3.1.3.9 | **QA** |  | 25d | 2007-02-20 A | 2007-03-26 A |  | 100% |  |  |  |  |  | 200h | 200h |
| 56 | 1.3.1.3.9.1 | Test Development |  | 7d | 2007-02-20 A | 2007-02-28 A | 30 | 100% |  |  |  | start no earlier than 2007-02-14 | Steve | 56h | 56h |
| 57 | 1.3.1.3.9.2 | Test Execution |  | 9d | 2007-03-14 A | 2007-03-26 A | 39, 56 | 100% |  |  |  |  | Steve | 72h | 72h |
| 58 | 1.3.1.3.9.3 | Test Support |  | 9d | 2007-03-14 A | 2007-03-26 A | 39 | 100% |  |  |  |  | Satish/Dan | 72h | 72h |
| 59 | 1.3.1.3.10 | **Documentation** |  | 4.75d | 2007-03-20 A | 2007-03-27 A |  | 100% |  |  |  |  |  | 32h | 32h |
| 60 | 1.3.1.3.10.1 | Update Programmers Guide, Release Notes |  | 3d | 2007-03-20 A | 2007-03-23 A |  | 100% |  |  |  |  | Dan | 24h | 24h |
| 61 | 1.3.1.3.10.2 | Review |  | 0.5d | 2007-03-26 A | 2007-03-26 A | 60 | 100% |  |  |  |  | Dan | 4h | 4h |
| 62 | 1.3.1.3.10.3 | Final |  | 0.5d | 2007-03-27 A | 2007-03-27 A | 61 | 100% |  |  |  |  | Dan | 4h | 4h |
| 63 | 1.3.1.3.11 | Release Packaging |  | 2d | 2007-03-21 A | 2007-03-28 | 57 | 95% | 0.1d | 143d |  |  | Satish | 16h | 15.2h |
| 64 | 1.3.1.3.12 | **Iteration Plan** |  | 2d | 2007-03-27 | 2007-03-28 | 57 |  |  | 133d |  |  |  | 48h |  |
| 65 | 1.3.1.3.12.1 | Review Client Feature Request/Revise Task Plan |  | 2d | 2007-03-27 | 2007-03-28 |  |  |  | 133d | 0d |  | Charles; Avinash; Satish | 48h |  |
| 66 | 1.3.1.4 | 3.2.1 Release Complete | milestone | 0d | 2007-03-28 | 2007-03-28 | 65 |  |  | 143d |  |  |  |  |  |
| 67 | 1.3.2 | **Iteration 2** |  | 63d? | 2007-03-27 A | 2007-06-21 |  | 31% | 43.39d? | 82d |  |  |  | 742h | 215.2h |
| 68 | 1.3.2.1 | **SDK 4.0 Release (Beta 1)** |  | 63d? | 2007-03-27 A | 2007-06-21 |  | 31% | 43.39d? | 82d |  |  |  | 742h | 215.2h |
| 69 | 1.3.2.1.1 | Update Requirements Document |  | 5d | 2007-03-29 | 2007-04-04 | 65 |  |  | 133d | 0d |  | Charles [15%] | 6h |  |
| 70 | 1.3.2.1.2 | **Boot Camp Support** |  | 14d | 2007-04-09 A | 2007-04-26 A |  | 100% |  |  |  |  |  | 64h | 64h |
| 71 | 1.3.2.1.2.1 | Presentation |  | 4d | 2007-04-09 A | 2007-04-12 A |  | 100% |  |  |  | start no earlier than 2007-04-09 | Satish | 32h | 32h |
| 72 | 1.3.2.1.2.2 | Demo |  | 2d | 2007-04-18 A | 2007-04-19 A |  | 100% |  |  |  | start no earlier than 2007-04-18 | Satish | 16h | 16h |
| 73 | 1.3.2.1.2.3 | Demo |  | 2d | 2007-04-25 A | 2007-04-26 A |  | 100% |  |  |  | start no earlier than 2007-04-25 | Satish | 16h | 16h |
| 74 | 1.3.2.1.3 | **Upgrade Code Generation Framework** |  | 53d? | 2007-03-27 A | 2007-06-07 |  | 46% | 28.64d? | 0d |  |  |  | 408h | 151.2h |
| 75 | 1.3.2.1.3.1 | Prototype of new Code Gen Framework |  | 10d | 2007-03-27 A | 2007-04-09 A | 58 | 100% |  |  |  |  | Satish [50%] | 40h | 40h |
| 76 | 1.3.2.1.3.2 | Prototype use of ACEGI/CSM for Security |  | 10d | 2007-03-27 A | 2007-04-09 A | 58 | 100% |  |  |  |  | Satish [50%] | 40h | 40h |

| ID | WBS | Task | Duration | Start | Finish | Predecessors | Complete | Remaining | Total slack | Free slack | Constraint | Resources | Work | Actual work |
| --- | --- | --- | --- | --- | --- | --- | --- | --- | --- | --- | --- | --- | --- | --- |
| 77 | 1.3.2.1.3.3 | **Design** | 8.2d? | 2007-04-13 A | 2007-04-25 A |  | 100% |  |  |  |  |  | 64h | 64h |
| 78 | 1.3.2.1.3.3.1 | Overview | 1d | 2007-04-13 A | 2007-04-13 A | 71 | 100% |  |  |  |  | Satish | 8h | 8h |
| 79 | 1.3.2.1.3.3.2 | Review of Approach | 0.2d | 2007-04-16 A | 2007-04-16 A | 78 | 100% |  |  |  |  | Satish; Doug; Kunal; Vijay; Charles | 8h | 8h |
| 80 | 1.3.2.1.3.3.3 | Code Gen Detail Design | 2d | 2007-04-16 A | 2007-04-18 A | 79 | 100% |  |  |  |  | Satish | 16h | 16h |
| 81 | 1.3.2.1.3.3.4 | ACEGI/CSM Security Detail Design | 2d | 2007-04-20 A | 2007-04-23 A | 72 | 100% |  |  |  |  | Satish | 16h | 16h |
| 82 | 1.3.2.1.3.3.5 | Design/Prototype Review | 0.2d? | 2007-04-24 A | 2007-04-24 A | 81 | 100% |  |  |  |  | Satish; Doug; Kunal; Vijay; Charles | 8h | 8h |
| 83 | 1.3.2.1.3.3.6 | Design Update | 1d | 2007-04-24 A | 2007-04-25 A | 82 | 100% |  |  |  |  | Satish | 8h | 8h |
| 84 | 1.3.2.1.3.4 | Implement new code generation framework | 3d | 2007-04-27 A | 2007-05-01 | 77, 73 | 30% | 2.1d | 0d |  |  | Satish | 24h | 7.2h |
| 85 | 1.3.2.1.3.5 | Rewrite bean generation for JDK 1.5 | 2d | 2007-05-02 | 2007-05-03 | 84 |  |  | 0d |  |  | Satish | 16h |  |
| 86 | 1.3.2.1.3.6 | Rewrite O/R mapping generation (.hbm.xml, .cfg.xml, ehcache.xml) | 10d | 2007-05-04 | 2007-05-31 | 85 |  |  | 0d |  |  | Satish | 80h |  |
| 87 | 1.3.2.1.3.7 | **Implement class cache for JDK 1.5** | 7d | 2007-05-11 | 2007-05-22 | 116, 120 |  |  | 1.5d | 0d |  |  | 56h |  |
| 88 | 1.3.2.1.3.7.1 | Development | 4d | 2007-05-11 | 2007-05-17 |  |  |  | 1.5d | 0d |  | Dan | 32h |  |
| 89 | 1.3.2.1.3.7.2 | Integration of class cache in web tier | 1d | 2007-05-17 | 2007-05-18 | 88 |  |  | 1.5d | 0d |  | Dan | 8h |  |
| 90 | 1.3.2.1.3.7.3 | Change nestedCriteria to use class cache | 1d | 2007-05-18 | 2007-05-21 | 89 |  |  | 1.5d | 0d |  | Dan | 8h |  |
| 91 | 1.3.2.1.3.7.4 | Change CQL translator to use class cache | 1d | 2007-05-21 | 2007-05-22 | 90 |  |  | 1.5d | 0d |  | Dan | 8h |  |
| 92 | 1.3.2.1.3.8 | Rewrite XML schema generaotor | 2d | 2007-05-22 | 2007-05-24 | 87 |  |  | 1.5d | 0d |  | Dan | 16h |  |
| 93 | 1.3.2.1.3.9 | Rewrite XML mapping file generator | 2d | 2007-05-24 | 2007-05-28 | 92 |  |  | 1.5d | 0d |  | Dan | 16h |  |
| 94 | 1.3.2.1.3.10 | Build Script | 2d | 2007-05-28 | 2007-05-30 | 93 |  |  | 1.5d | 0d |  | Dan | 16h |  |
| 95 | 1.3.2.1.3.11 | Supporting files generation (coreBeans.properties, DAOConfig.xml) | 5d | 2007-06-01 | 2007-06-07 | 86 |  |  | 0d |  |  | Satish | 40h |  |
| 96 | 1.3.2.1.4 | **QA** | 39d | 2007-04-30 | 2007-06-21 |  |  |  | 29d |  |  |  | 240h |  |
| 97 | 1.3.2.1.4.1 | Test Development | 10d | 2007-04-30 | 2007-05-11 | 77 |  |  | 111d |  | start no earlier than 2007-04-30 | Steve | 80h |  |
| 98 | 1.3.2.1.4.2 | Test Execution | 10d | 2007-06-08 | 2007-06-21 | 74 |  |  | 82d |  |  | Steve | 80h |  |
| 99 | 1.3.2.1.4.3 | Test Support | 10d | 2007-06-08 | 2007-06-21 | 74 |  |  | 0d |  |  | Satish [50%] | 40h |  |
| 100 | 1.3.2.1.4.4 | Documentation | 10d | 2007-06-08 | 2007-06-21 | 74 |  |  | 0d |  |  | Satish [50%] | 40h |  |

Notes:
- 84: ·Combine generation steps so that XMI file is read only once / ·Implement model validation routine as common project
- 85: ·Support for java 1.5 generics / ·Allow to use visibility specified in UML tool / ·Allow to use primitives
- 86: ·Support for alternate way of mapping inheritance / ·Many to One and One to Many do not support correlation table / ·Lazy attribute in UML model / ·Cascade operations in UML model
- 92: ·Use pulicId and version in the xml schema / ·use permissible values in XML schema

| ID | WBS | Task | Type | Duration | Start | Finish | Predecessors | Complete | Remaining | Total slack | Free slack | Constraint | Resources | Work | Actual work |
| --- | --- | --- | --- | --- | --- | --- | --- | --- | --- | --- | --- | --- | --- | --- | --- |
| 101 | 1.3.2.1.5 | **Iteration Plan** |  | 1d | 2007-05-22 | 2007-05-23 |  |  |  | 103.5d |  |  |  | 24h |  |
| 102 | 1.3.2.1.5.1 | Review Client Feature Request/Revise Task Plan |  | 1d | 2007-05-22 | 2007-05-23 | 91 |  |  | 103.5d |  |  | Charles; Avinash; Satish | 24h |  |
| 103 | 1.3.3 | **Iteration 3** |  | 47.25d | 2007-03-07 A | 2007-05-11 |  | 41% | 27.68d | 111.5d |  |  |  | 550h | 222h |
| 104 | 1.3.3.1 | **Release 4.0 (Open Source UML Tool Support)** |  | 47.25d | 2007-03-07 A | 2007-05-11 |  | 41% | 27.68d | 111.5d |  |  |  | 550h | 222h |
| 105 | 1.3.3.1.1 | Update Requirements Document |  | 5d | 2007-04-05 | 2007-04-11 | 69 |  |  | 133d |  |  | Charles [15%] | 6h |  |
| 106 | 1.3.3.1.2 | **Open Source Modeling Tool XMI Processor** |  | 37.25d | 2007-03-07 A | 2007-04-27 |  | 82% | 6.65d | 121.5d |  |  |  | 288h | 184h |
| 107 | 1.3.3.1.2.1 | Evaluation |  | 4d | 2007-03-07 A | 2007-04-02 A | 62 | 100% |  |  |  |  | Dan | 32h | 32h |
| 108 | 1.3.3.1.2.2 | Present Evaluation for review |  | 0.5d | 2007-04-02 A | 2007-04-02 A | 107 | 100% |  |  |  |  | Dan | 4h | 4h |
| 109 | 1.3.3.1.2.3 | Build SDK Test Model |  | 3d | 2007-04-02 A | 2007-04-05 A | 108 | 100% |  |  |  |  |  |  |  |
| 110 | 1.3.3.1.2.4 | Revise Evaluation/Finalize On Tool |  | 3d | 2007-04-05 A | 2007-04-09 A | 109 | 100% |  |  |  |  | Dan | 24h | 24h |
| 111 | 1.3.3.1.2.5 | Design |  | 2d | 2007-04-10 A | 2007-04-11 A | 110 | 100% |  |  |  |  | Dan | 16h | 16h |
| 112 | 1.3.3.1.2.6 | Design Review |  | 1d | 2007-04-12 A | 2007-04-12 A | 111 | 100% |  |  |  | start no earlier than 2007-04-09 | Dan; Satish; Christophe; Ye | 32h | 32h |
| 113 | 1.3.3.1.2.7 | Finalize Design |  | 0.5d | 2007-04-13 A | 2007-04-13 A | 112 | 100% |  |  |  |  | Dan | 4h | 4h |
| 114 | 1.3.3.1.2.8 | Evaluate LOE/Revise Task Plan for Development |  | 4d | 2007-04-13 | 2007-04-19 | 113 |  |  | 127.5d |  |  | Charles; Steve A.; Ye Wu | 96h |  |
| 115 | 1.3.3.1.2.9 | Development |  | 10d | 2007-04-13 A | 2007-04-27 | 113 | 90% | 1d | 1.5d | 0d |  | Dan | 80h | 72h |
| 116 | 1.3.3.1.3 | **QA** |  | 20d | 2007-04-13 A | 2007-05-11 |  | 21% | 15.87d | 1.5d | 0d |  |  | 152h | 38h |
| 117 | 1.3.3.1.3.1 | Test Development |  | 5d | 2007-04-13 A | 2007-04-20 | 113 | 95% | 0.25d | 16.5d |  |  | Steve | 40h | 38h |
| 118 | 1.3.3.1.3.2 | Test Execution |  | 10d | 2007-04-27 | 2007-05-11 | 115 |  |  | 1.5d |  |  | Steve | 80h |  |
| 119 | 1.3.3.1.3.3 | Test Support |  | 8d | 2007-04-27 | 2007-05-09 | 115 |  |  | 3.5d |  |  | Dan [50%] | 32h |  |
| 120 | 1.3.3.1.4 | Release Packaging |  | 8d | 2007-04-27 | 2007-05-09 | 115 |  |  | 3.5d | 2d |  | Dan [50%] | 32h |  |
| 121 | 1.3.3.1.5 | **Iteration Plan** |  | 3d | 2007-04-27 | 2007-05-02 |  |  |  | 118.5d | 7d |  |  | 72h |  |
| 122 | 1.3.3.1.5.1 | Review Client Feature Request/Revise Task Plan |  | 3d | 2007-04-27 | 2007-05-02 | 115 |  |  | 118.5d |  |  | Charles; Avinash; Satish | 72h |  |
| 123 | 1.3.3.1.6 | Iteration 3 Complete | milestone | 0d | 2007-05-11 | 2007-05-11 | 116, 121 |  |  | 111.5d |  |  |  |  |  |
| 124 | 1.3.4 | **Iteration 4** |  | 57d | 2007-05-30 | 2007-08-20 |  |  |  | 1.5d |  |  |  | 758h |  |
| 125 | 1.3.4.1 | **Release 4.0 (Final Release)** |  | 57d | 2007-05-30 | 2007-08-20 |  |  |  | 1.5d |  |  |  | 758h |  |
| 126 | 1.3.4.1.1 | **Change architecture of Application Service** |  | 9.5d | 2007-06-22 | 2007-07-06 |  |  |  | 0d |  |  |  | 80h |  |
| 127 | 1.3.4.1.1.1 | Design |  | 4d | 2007-06-22 | 2007-06-27 | 99, 100 |  |  | 0d |  |  | Satish | 32h |  |
| 128 | 1.3.4.1.1.2 | Design Review |  | 0.25d | 2007-06-28 | 2007-06-28 | 127 |  |  | 0d |  |  | Dan; Doug M.; Satish | 6h |  |
| 129 | 1.3.4.1.1.3 | Design Update |  | 0.25d | 2007-06-28 | 2007-06-28 | 128 |  |  | 0d |  |  | Satish | 2h |  |
| 130 | 1.3.4.1.1.4 | Development |  | 5d | 2007-06-28 | 2007-07-06 | 129 |  |  | 0d |  |  | Satish | 40h |  |

Notes:
- 127: Design architecture of Application Service AND design the solution for Supporting multiple ApplicationService instances in the same JVM (task #131)

| ID | WBS | Task | Duration | Start | Finish | Predecessors | Total slack | Free slack | Resources | Work |
| --- | --- | --- | --- | --- | --- | --- | --- | --- | --- | --- |
| 131 | 1.3.4.1.2 | **Support multiple ApplicationService in same JVM** | 6d | 2007-07-06 | 2007-07-16 |  | 0d |  |  | 48h |
| 132 | 1.3.4.1.2.1 | Development/Unit Test | 6d | 2007-07-06 | 2007-07-16 | 126 | 0d |  | Satish | 48h |
| 133 | 1.3.4.1.3 | **Annotation Based Web Services** | 13.5d | 2007-05-30 | 2007-06-18 |  | 1.5d | 0d |  | 108h |
| 134 | 1.3.4.1.3.1 | Design | 3d | 2007-05-30 | 2007-06-04 | 94 | 1.5d | 0d | Dan | 24h |
| 135 | 1.3.4.1.3.2 | Design Review | 0.25d | 2007-06-04 | 2007-06-04 | 134 | 1.5d | 0d | Dan | 2h |
| 136 | 1.3.4.1.3.3 | Design Update | 0.25d | 2007-06-04 | 2007-06-04 | 135 | 1.5d | 0d | Dan | 2h |
| 137 | 1.3.4.1.3.4 | Development/Unit Test | 10d | 2007-06-05 | 2007-06-18 | 136 | 1.5d |  | Dan | 80h |
| 138 | 1.3.4.1.4 | **Remove duplication of code due to security injection - ACEGI Framework** | 10d | 2007-06-19 | 2007-07-02 |  | 1.5d | 0d |  | 80h |
| 139 | 1.3.4.1.4.1 | Development/Unit Test | 10d | 2007-06-19 | 2007-07-02 | 133 | 1.5d |  | Dan | 80h |
| 140 | 1.3.4.1.5 | **Re-architect information in SpringConfig.xml and DAOConfig.xml** | 4.5d | 2007-07-03 | 2007-07-10 |  | 1.5d | 0d |  | 40h |
| 141 | 1.3.4.1.5.1 | Design | 1d | 2007-07-03 | 2007-07-03 | 138 | 1.5d | 0d | Dan | 8h |
| 142 | 1.3.4.1.5.2 | Design Review | 0.25d | 2007-07-05 | 2007-07-05 | 141 | 1.5d | 0d | Dan; Satish; Charles | 6h |
| 143 | 1.3.4.1.5.3 | Design Update | 0.25d | 2007-07-05 | 2007-07-05 | 142 | 1.5d | 0d | Dan | 2h |
| 144 | 1.3.4.1.5.4 | Development | 3d | 2007-07-05 | 2007-07-10 | 143 | 1.5d |  | Dan | 24h |
| 145 | 1.3.4.1.6 | **Improved logging/trace messages** | 2.5d | 2007-07-10 | 2007-07-12 |  | 1.5d |  |  | 20h |
| 146 | 1.3.4.1.6.1 | Development | 2.5d | 2007-07-10 | 2007-07-12 | 140 | 1.5d |  | Dan | 20h |
| 147 | 1.3.4.1.7 | Release to QA | 1d | 2007-07-16 | 2007-07-17 | 131, 145 | 65.5d |  | Dan | 8h |
| 148 | 1.3.4.1.8 | **QA** | 39d | 2007-06-04 | 2007-07-30 |  | 0d |  |  | 200h |
| 149 | 1.3.4.1.8.1 | Test Development | 5d | 2007-06-04 | 2007-06-11 | 134 | 34d |  | Steve | 40h |
| 150 | 1.3.4.1.8.2 | Test Execution | 10d | 2007-07-16 | 2007-07-30 | 131, 145 | 0d |  | Steve | 80h |
| 151 | 1.3.4.1.8.3 | Test Support | 10d | 2007-07-03 | 2007-07-17 | 138, 133 | 8.5d |  | Dan [50%]; Satish [50%] | 80h |
| 152 | 1.3.4.1.9 | **Documentation** | 10d | 2007-07-03 | 2007-07-17 |  | 65d |  |  | 80h |
| 153 | 1.3.4.1.9.1 | Update Documentation | 10d | 2007-07-03 | 2007-07-17 | 138, 133 | 65d |  | Dan [50%]; Satish [50%] | 80h |
| 154 | 1.3.4.1.10 | Integration Testing Support | 15d | 2007-07-30 | 2007-08-20 | 148 | 38.5d | 0d | Dan [50%]; Satish [50%] | 94h |

Notes:
- 139: Includes integrating CSM developed components

| ID | WBS | Task | Type | Duration | Start | Finish | Predecessors | Total slack | Free slack | Constraint | Resources | Work |
| --- | --- | --- | --- | --- | --- | --- | --- | --- | --- | --- | --- | --- |
| 155 | 1.4 | **Transition** |  | 28d | 2007-07-30 | 2007-09-06 |  | 0d |  |  |  | 244h |
| 156 | 1.4.1 | **Documentation** |  | 21d | 2007-07-30 | 2007-08-28 |  | 0d |  |  |  | 172h |
| 157 | 1.4.1.1 | New users guide |  | 10d | 2007-07-30 | 2007-08-22 | 148 | 1.5d | 0d | start no earlier than 2007-06-15 | Satish [50%] | 40h |
| 158 | 1.4.1.2 | New technical guide |  | 15d | 2007-07-30 | 2007-08-20 | 148 | 0d |  | start no earlier than 2007-06-15 | Dan [50%] | 60h |
| 159 | 1.4.1.3 | technical guide help |  | 4d | 2007-08-22 | 2007-08-28 | 157 | 1.5d | 0d |  | Satish | 32h |
| 160 | 1.4.1.4 | How to examples |  | 5d | 2007-08-20 | 2007-08-27 | 158 | 0d |  | start no earlier than 2007-06-15 | Dan | 40h |
| 161 | 1.4.2 | **Production Packaging** |  | 8d | 2007-08-27 | 2007-09-06 |  | 0d |  |  |  | 72h |
| 162 | 1.4.2.1 | Update Download Site |  | 2d | 2007-08-27 | 2007-08-29 | 160 | 0d |  |  | Dan | 16h |
| 163 | 1.4.2.2 | Develop Production promotion Documentation |  | 2d | 2007-08-28 | 2007-08-30 | 159 | 1.5d | 0d |  | Satish | 16h |
| 164 | 1.4.2.3 | Push to Produciton |  | 5d | 2007-08-30 | 2007-09-06 | 162, 163 | 28.5d | 0d | start no earlier than 2007-08-30 | Terpsys | 40h |
| 165 | 1.4.3 | 4.0 Release Complete | milestone | 0d | 2007-09-06 | 2007-09-06 | 164 | 28.5d |  |  |  |  |
| 166 | 2 | **caCORE SDK v4.X** |  | 41.5d | 2007-08-20 | 2007-10-16 |  | 0d |  |  |  | 860.33h |
| 167 | 2.1 | **Iteration 1** |  | 41.5d | 2007-08-20 | 2007-10-16 |  | 0d |  |  |  | 860.33h |
| 168 | 2.1.1 | **Elaboration** |  | 3d | 2007-08-20 | 2007-08-23 |  | 38.5d |  |  |  | 51h |
| 169 | 2.1.1.1 | Review Client Feature Request/Revise Task Plan |  | 3d | 2007-08-20 | 2007-08-23 | 154 | 38.5d |  | start no earlier than 2007-07-06 | Charles; Avinash; Satish [15%] | 51h |
| 170 | 2.1.2 | **Construction** |  | 30d | 2007-08-29 | 2007-10-10 |  | 0d |  |  |  | 489.33h |
| 171 | 2.1.2.1 | **Support interfaces (including marker interfaces), abstract class, enumeration** |  | 14.5d | 2007-08-29 | 2007-09-18 |  | 0d |  |  |  | 116h |
| 172 | 2.1.2.1.1 | Design |  | 1.5d | 2007-08-29 | 2007-08-30 | 162 | 0d |  |  | Dan | 12h |
| 173 | 2.1.2.1.2 | Design Review |  | 0.5d | 2007-08-31 | 2007-08-31 | 172 | 0d |  |  | Dan | 4h |
| 174 | 2.1.2.1.3 | Design Update |  | 0.5d | 2007-08-31 | 2007-08-31 | 173 | 0d |  |  | Dan | 4h |
| 175 | 2.1.2.1.4 | Development/Unit Test |  | 12d | 2007-09-03 | 2007-09-18 | 174 | 0d |  |  | Dan | 96h |
| 176 | 2.1.2.2 | **Allow user to Specify name of the remoteService.xml file externally** |  | 2d | 2007-09-19 | 2007-09-20 |  | 0d |  |  |  | 16h |
| 177 | 2.1.2.2.1 | Development/Unit Test |  | 2d | 2007-09-19 | 2007-09-20 | 171 | 0d |  |  | Dan | 16h |
| 178 | 2.1.2.3 | **Allow to use composition/class as attributes** |  | 6.5d | 2007-08-30 | 2007-09-07 |  | 1.5d | 0d |  |  | 56h |
| 179 | 2.1.2.3.1 | Design |  | 1d | 2007-08-30 | 2007-08-31 | 163 | 1.5d | 0d |  | Satish | 8h |
| 180 | 2.1.2.3.2 | Design Review |  | 0.25d | 2007-08-31 | 2007-08-31 | 179 | 1.5d | 0d |  | Dan; Satish; Charles | 6h |
| 181 | 2.1.2.3.3 | Design Update |  | 0.25d | 2007-08-31 | 2007-08-31 | 180 | 1.5d | 0d |  | Satish | 2h |
| 182 | 2.1.2.3.4 | Development/Unit Test |  | 5d | 2007-09-03 | 2007-09-07 | 181 | 1.5d |  |  | Satish | 40h |

| ID | WBS | Task | Duration | Start | Finish | Predecessors | Total slack | Free slack | Constraint | Resources | Work |
| --- | --- | --- | --- | --- | --- | --- | --- | --- | --- | --- | --- |
| 183 | 2.1.2.4 | **Transient Variable Support** | 7.5d | 2007-09-10 | 2007-09-19 |  | 1.5d |  |  |  | 60h |
| 184 | 2.1.2.4.1 | Design | 1d | 2007-09-10 | 2007-09-10 | 178 | 1.5d | 0d |  | Satish | 8h |
| 185 | 2.1.2.4.2 | Design Review | 0.25d | 2007-09-11 | 2007-09-11 | 184 | 1.5d | 0d |  | Satish | 2h |
| 186 | 2.1.2.4.3 | Design Update | 0.25d | 2007-09-11 | 2007-09-11 | 185 | 1.5d | 0d |  | Satish | 2h |
| 187 | 2.1.2.4.4 | Development/Unit Test | 6d | 2007-09-11 | 2007-09-19 | 186 | 1.5d |  |  | Satish | 48h |
| 188 | 2.1.2.5 | **QA** | 22d | 2007-09-03 | 2007-10-02 |  | 4.5d | 0d |  |  | 157.33h |
| 189 | 2.1.2.5.1 | Test Development | 5d | 2007-09-03 | 2007-09-07 | 174 | 21.5d |  | start no earlier than 2007-08-06 | Steve | 40h |
| 190 | 2.1.2.5.2 | Test Execution | 8d | 2007-09-21 | 2007-10-02 | 183, 176 | 4.5d |  |  | Steve | 64h |
| 191 | 2.1.2.5.3 | Test Support | 8d | 2007-09-21 | 2007-10-02 | 183, 176 | 4.5d |  |  | Satish [50%]; Dan [50%] | 53.33h |
| 192 | 2.1.2.6 | **Integration Testing** | 5.5d | 2007-10-03 | 2007-10-10 |  | 4.5d |  |  |  | 84h |
| 193 | 2.1.2.6.1 | Promote to Staging | 0.5d | 2007-10-03 | 2007-10-03 | 188 | 4.5d | 0d |  | Dan | 4h |
| 194 | 2.1.2.6.2 | Test | 5d | 2007-10-03 | 2007-10-10 | 193 | 4.5d |  |  | Steve | 40h |
| 195 | 2.1.2.6.3 | Test Support | 5d | 2007-10-03 | 2007-10-10 | 193 | 4.5d |  |  | Satish [50%]; Dan [50%] | 40h |
| 196 | 2.1.3 | **Transition** | 18d | 2007-09-21 | 2007-10-16 |  | 0d |  |  | SDK Users | 320h |
| 197 | 2.1.3.1 | **Documentation** | 10d | 2007-09-21 | 2007-10-04 |  | 0d |  |  |  | 80h |
| 198 | 2.1.3.1.1 | users guide | 5d | 2007-09-21 | 2007-09-27 | 183, 176 | 0d |  | start no earlier than 2007-06-15 | Satish [50%] | 20h |
| 199 | 2.1.3.1.2 | technical guide | 10d | 2007-09-21 | 2007-10-04 | 183, 176 | 0d |  | start no earlier than 2007-06-15 | Dan [50%] | 40h |
| 200 | 2.1.3.1.3 | How to examples | 5d | 2007-09-28 | 2007-10-04 | 198 | 0d |  | start no earlier than 2007-06-15 | Satish [50%] | 20h |
| 201 | 2.1.3.2 | **Production Packaging** | 8d | 2007-10-05 | 2007-10-16 |  | 0d |  |  |  | 96h |
| 202 | 2.1.3.2.1 | Update Download Site | 4d | 2007-10-05 | 2007-10-10 | 199 | 0d |  |  | Dan | 32h |
| 203 | 2.1.3.2.2 | Develop Production promotion Documentation | 4d | 2007-10-05 | 2007-10-10 | 200 | 0d |  |  | Satish | 32h |
| 204 | 2.1.3.2.3 | Push to Produciton | 4d | 2007-10-11 | 2007-10-16 | 202, 203 | 0d |  | start no earlier than 2007-08-30 | Terpsys | 32h |
